# Afghan Governmental Intranet

Schedule from ProjectLibre, 2020-02-17 to 2023-03-03.

## Calendars

- Standard: Mon-Fri 08:00-12:00, 13:00-17:00; Sat-Sun off.

## Resources

| Resource | Rate |
| --- | --- |
| Unassigned |  |
| Project Manager | 15 |
| Project Assistant | 12 |
| Project Technical Assistant | 12 |
| Head of Network Department | 12 |
| Network Engineer #1 | 10 |
| Network Engineer #2 | 10 |
| Network Engineer #3 | 10 |
| Network Engineer #5 | 10 |
| Network Engineer #6 | 10 |
| Head of OFC Department | 12 |
| OFC Technician #1 | 10 |
| OFC Technician #2 | 10 |
| OFC Technician #3 | 10 |

## Schedule

| ID | WBS | Task | Duration | Start | Finish | Predecessors | Constraint | Resources | Text1 |
| --- | --- | --- | --- | --- | --- | --- | --- | --- | --- |
| 1 | 1 | **Afghan Governmental Intranet** | 794.93d | 2020-02-17 | 2023-03-03 |  | start no earlier than 2020-02-15 |  |  |
| 2 | 1.1 | **Project Preparation** | 65.6d | 2020-02-17 | 2020-05-18 |  |  |  | 1 |
| 3 | 1.1.1 | **Project Specification** | 36.6d | 2020-02-17 | 2020-04-07 |  |  |  | 1.1 |
| 4 | 1.1.1.1 | Project Discussion with MCIT, ATRA, and AFTEL | 14d | 2020-02-17 | 2020-03-05 |  |  | Project Manager; Project Assistant; Project Technical Assistant | 1.1.1 |
| 5 | 1.1.1.2 | Lawful Negotiations | 7d | 2020-03-06 | 2020-03-16 | 4 |  | Project Manager; Project Assistant; Project Technical Assistant | 1.1.2 |
| 6 | 1.1.1.3 | Budget Negotiations | 7d | 2020-03-17 | 2020-03-25 | 5 |  | Project Manager; Project Assistant; Project Technical Assistant | 1.1.3 |
| 7 | 1.1.1.4 | Dealing with New Ideas | 5d | 2020-03-26 | 2020-04-01 | 4, 5, 6 |  | Project Manager; Project Technical Assistant | 1.1.4 |
| 8 | 1.1.1.5 | Finalizing the Project Scope | 3.6d | 2020-04-02 | 2020-04-07 | 4, 5, 6, 7 |  | Head of Network Department; Head of OFC Department; Project Assistant; Project Manager; Project Technical Assistant | 1.1.5 |
| 9 | 1.1.2 | **Project Planning** | 29d | 2020-04-07 | 2020-05-18 | 3 |  |  | 1.2 |
| 10 | 1.1.2.1 | Risk Management Plan | 10d | 2020-04-07 | 2020-04-21 | 8 |  | Project Manager; Project Assistant; Project Technical Assistant | 1.2.1 |
| 11 | 1.1.2.2 | Requirements and Change Management Plan | 12d | 2020-04-21 | 2020-05-07 | 10 |  | Project Manager; Project Assistant; Project Technical Assistant | 1.2.2 |
| 12 | 1.1.2.3 | Team Setup | 7d | 2020-05-07 | 2020-05-18 | 8, 10, 11 |  | Project Assistant; Project Manager | 1.2.3 |
| 13 | 1.1.3 | Project Startup | 0d | 2020-05-18 | 2020-05-18 | 3, 9 |  |  | 1.3 |
| 14 | 1.2 | **Requirements** | 216.33d | 2020-05-18 | 2021-03-16 | 2 |  |  | 2 |
| 15 | 1.2.1 | **Requirements Gathering** | 22d | 2020-05-18 | 2020-06-17 |  |  |  | 2.1 |
| 16 | 1.2.1.1 | Meetings with MCIT | 3d | 2020-05-18 | 2020-05-21 | 12 |  | Head of Network Department; Project Technical Assistant | 2.1.1 |
| 17 | 1.2.1.2 | Meetings with ATRA | 2d | 2020-05-18 | 2020-05-20 | 16SS |  | Project Technical Assistant; Head of Network Department | 2.1.2 |
| 18 | 1.2.1.3 | Meetings with AFTEL | 2d | 2020-05-18 | 2020-05-20 | 17SS |  | Project Technical Assistant; Head of OFC Department | 2.1.3 |
| 19 | 1.2.1.4 | Meetings with NIXA | 4d | 2020-05-18 | 2020-05-22 | 18SS |  | Project Technical Assistant | 2.1.4 |
| 20 | 1.2.1.5 | Meetings with MoF, MoIA | 4d | 2020-05-22 | 2020-05-28 | 19 |  | Project Manager; Project Assistant; Project Technical Assistant | 2.1.5 |
| 21 | 1.2.1.6 | Structured Interviews | 7d | 2020-05-28 | 2020-06-08 | 19, 20 |  | Network Engineer #1; Network Engineer #5; OFC Technician #1 | 2.1.6 |
| 22 | 1.2.1.7 | Questionnaires | 14d | 2020-05-28 | 2020-06-17 | 21SS |  | Network Engineer #2; Network Engineer #6; OFC Technician #2 | 2.1.7 |
| 23 | 1.2.1.8 | Observations | 7d | 2020-06-08 | 2020-06-17 | 22FF |  | Network Engineer #3; OFC Technician #3 | 2.1.8 |
| 24 | 1.2.2 | **Afghan OFC Infrastructure Analysis** | 157d | 2020-06-17 | 2021-01-22 | 15 |  |  | 2.2 |
| 25 | 1.2.2.1 | Data Gathering from All 34 Provinces | 136d | 2020-06-17 | 2020-12-24 | 16SS |  | Head of OFC Department; OFC Technician #1; OFC Technician #2; OFC Technician #3 | 2.2.1 |
| 26 | 1.2.2.2 | Technical Analysis of the Afghan OFC Infrastructure | 14d | 2020-12-24 | 2021-01-13 | 25 |  | Project Technical Assistant; Head of Network Department; Head of OFC Department | 2.2.2 |
| 27 | 1.2.2.3 | Negotiating the Project with Local Governmental Institutions | 21d | 2020-11-25 | 2020-12-24 | 25FF |  | Head of OFC Department | 2.2.3 |
| 28 | 1.2.2.4 | Final Analysis of the Gathered Data | 14d | 2020-12-24 | 2021-01-13 | 27 |  | Project Technical Assistant; Head of OFC Department | 2.2.4 |
| 29 | 1.2.2.5 | Feasibility Study of the Afghan OFC Infrastructure for this Project | 7d | 2021-01-13 | 2021-01-22 | 28 |  | Project Manager; Project Technical Assistant; Head of OFC Department | 2.2.5 |

| ID | WBS | Task | Duration | Start | Finish | Predecessors | Resources | Text1 |
| --- | --- | --- | --- | --- | --- | --- | --- | --- |
| 30 | 1.2.3 | **Requirements Analysis** | 37.33d | 2021-01-22 | 2021-03-16 | 24 |  | 2.3 |
| 31 | 1.2.3.1 | Technical Analysis | 21d | 2021-01-22 | 2021-02-22 | 29 | Head of Network Department; Head of OFC Department | 2.3.1 |
| 32 | 1.2.3.2 | Final Refinements and Approval | 9.33d | 2021-02-22 | 2021-03-05 | 31 | Head of Network Department; Head of OFC Department; Project Technical Assistant | 2.3.2 |
| 33 | 1.2.3.3 | System Definition | 7d | 2021-03-05 | 2021-03-16 | 29, 31, 32 | Project Assistant; Project Technical Assistant | 2.3.3 |
| 34 | 1.2.4 | Final Requirements Document | 0d | 2021-03-16 | 2021-03-16 | 15, 24, 30 |  | 2.4 |
| 35 | 1.2.5 | A Technical Analysis and Feasibility Study of the Afghan OFC Infrastructure for this Project | 0d | 2021-03-16 | 2021-03-16 | 34 |  | 2.5 |
| 36 | 1.3 | **Solution Design** | 41d | 2021-03-16 | 2021-05-12 | 14 |  | 3 |
| 37 | 1.3.1 | Requirements Review | 6d | 2021-03-16 | 2021-03-24 | 33 | Head of Network Department; Head of OFC Department | 3.1 |
| 38 | 1.3.2 | Use Case, Sequence, and Interaction Diagrams | 14d | 2021-03-24 | 2021-04-13 | 37 | Network Engineer #5; Network Engineer #6 | 3.2 |
| 39 | 1.3.3 | Topology Design (Based on the Afghan OFC Infrastructure) | 21d | 2021-03-24 | 2021-04-22 | 38SS | Network Engineer #1; Network Engineer #2; OFC Technician #1; OFC Technician #2 | 3.3 |
| 40 | 1.3.4 | Core, Regional, and Local Data Centers Design | 21d | 2021-03-24 | 2021-04-22 | 37 | Network Engineer #3; OFC Technician #3 | 3.4 |
| 41 | 1.3.5 | Network Service Software Design | 14d | 2021-04-22 | 2021-05-12 | 38, 40 | Network Engineer #5; Network Engineer #6 | 3.5 |
| 42 | 1.3.6 | Final Design Documentation | 0d | 2021-05-12 | 2021-05-12 | 41 |  | 3.6 |
| 43 | 1.4 | **Realization** | 237d | 2021-05-12 | 2022-04-08 | 36 |  | 4 |
| 44 | 1.4.1 | Setting Up the Core, Regional, and Local Data Centers, in All 34 Provinces | 170d | 2021-05-12 | 2022-01-05 | 39, 40 | Network Engineer #1; Network Engineer #3; Network Engineer #2 | 4.1 |
| 45 | 1.4.2 | Connecting the Data Centers with the Afghan OFC Infrastructure | 30d | 2022-01-05 | 2022-02-16 | 44 | OFC Technician #1; OFC Technician #3 | 4.2 |
| 46 | 1.4.3 | Creating a Network for the Designed Topology, over the OFC Infrastructure | 30d | 2022-02-16 | 2022-03-30 | 45 | Network Engineer #2; OFC Technician #2 | 4.3 |
| 47 | 1.4.4 | Connecting the Data Centers with Each Other | 7d | 2022-03-30 | 2022-04-08 | 46 | Network Engineer #3; OFC Technician #3 | 4.4 |
| 48 | 1.4.5 | Configuring the Network Service Software | 21d | 2021-05-12 | 2021-06-10 | 44SS | Network Engineer #5; Network Engineer #6 | 4.5 |
| 49 | 1.4.6 | Implemented the Designed Topology | 0d | 2021-05-12 | 2021-05-12 |  |  | 4.7 |
| 50 | 1.4.7 | Network Service Software Configured | 0d | 2021-05-12 | 2021-05-12 | 49 |  | 4.8 |
| 51 | 1.5 | **Testing** | 190d | 2022-04-08 | 2022-12-30 | 43 |  | 5 |
| 52 | 1.5.1 | Deployment Testing | 180d | 2022-04-08 | 2022-12-16 |  | Head of Network Department; Head of OFC Department | 5.1 |
| 53 | 1.5.2 | Testing the Available Bandwidth inside the Network | 2d | 2022-12-16 | 2022-12-20 | 52 | Network Engineer #1 | 5.2 |
| 54 | 1.5.3 | Testing Security Parameters | 2d | 2022-12-16 | 2022-12-20 | 53SS | Network Engineer #2 | 5.3 |
| 55 | 1.5.4 | Testing Partial Mesh Topology | 3d | 2022-12-16 | 2022-12-21 | 53SS | Network Engineer #3 | 5.4 |
| 56 | 1.5.5 | Integration Testing | 7d | 2022-12-21 | 2022-12-30 | 55 | Network Engineer #5; Network Engineer #6 | 5.5 |
| 57 | 1.5.6 | Testing Complete; Final Approval | 0d | 2022-12-30 | 2022-12-30 | 56 |  | 5.6 |

| ID | WBS | Task | Duration | Start | Finish | Predecessors | Resources | Text1 |
| --- | --- | --- | --- | --- | --- | --- | --- | --- |
| 58 | 1.6 | **Maintenance and Optimization** | 45d | 2022-12-30 | 2023-03-03 | 51 |  | 6 |
| 59 | 1.6.1 | Monitoring the Network | 45d | 2022-12-30 | 2023-03-03 | 56SS | Head of Network Department; Head of OFC Department | 6.1 |
| 60 | 1.6.2 | Changing the Topology for Further Enhancing the Network | 45d | 2022-12-30 | 2023-03-03 | 59SS | Head of Network Department; Head of OFC Department | 6.2 |
| 61 | 1.6.3 | Establishing New Logical Routes between Provinces, over the OFC Infrastructure | 45d | 2022-12-30 | 2023-03-03 | 60SS | Head of OFC Department | 6.3 |
